Schedule from MS Project, 2025-11-03 to 2026-01-05, costs in R$.

## Calendars

- Standard: Mon-Fri 08:00-12:00, 13:00-17:00; Sat-Sun off.

## Resources

| Resource | Rate |
| --- | --- |
| Gustavo | 150 |
| Boaz | 125 |
| Cliente |  |
| GP Externo | 200 |
| Matheus | 130 |
| Caio | 100 |
| Gustavo, Boaz |  |

## Schedule

| ID | WBS | Task | Type | Duration | Start | Finish | Predecessors | Total slack | Resources | Work | Cost |
| --- | --- | --- | --- | --- | --- | --- | --- | --- | --- | --- | --- |
| 1 | 1 | **Sistema de Gestão Imobiliária (Release 00)** |  | 45.62d? | 2025-11-03 | 2026-01-05 |  | 0d |  | 298h | 31,155 |
| 2 | 1.1 | **Prospecção** |  | 10.25d | 2025-11-03 | 2025-11-17 |  | 0d |  | 54h | 7,425 |
| 3 | 1.1.1 | **PTEC** |  | 6.25d | 2025-11-03 | 2025-11-11 |  | 0d |  | 42h | 5,210 |
| 4 | 1.1.1.1 | Estudar Domínio de Aplicação |  | 1.5d | 2025-11-03 | 2025-11-04 |  | 0d | Matheus; Boaz; Caio; Gustavo | 26h | 3,260 |
| 5 | 1.1.1.2 | Reunir-se com o fornecedor de requisitos |  | 1d | 2025-11-04 | 2025-11-05 | 4 | 0.5d | Caio | 4h | 400 |
| 6 | 1.1.1.3 | Redigir Proposta Técnica |  | 1.25d | 2025-11-06 | 2025-11-10 | 5 | 0d | Boaz | 10h | 1,250 |
| 7 | 1.1.1.4 | Revisar Proposta Técnica |  | 1d | 2025-11-10 | 2025-11-11 | 6 | 0d | Gustavo | 2h | 300 |
| 8 | 1.1.1.5 | Aprovar Proposta Técnica | milestone | 0d | 2025-11-11 | 2025-11-11 | 7 | 0d | Cliente |  |  |
| 9 | 1.1.2 | **Estrutura Preliminar de Tamanho** |  | 2d | 2025-11-11 | 2025-11-13 |  | 0d |  | 2h | 315 |
| 10 | 1.1.2.1 | Estimar Tamanho do Projeto |  | 1d | 2025-11-11 | 2025-11-12 | 8 | 0d | Matheus; Caio | 1h | 115 |
| 11 | 1.1.2.2 | Revisar Estimativa de Tamanho do Projeto |  | 1d | 2025-11-12 | 2025-11-13 | 10 | 0d | GP Externo | 1h | 200 |
| 12 | 1.1.3 | **Estrutura Preliminar de Cronograma e Orçamento** |  | 2d | 2025-11-13 | 2025-11-17 |  | 0d |  | 10h | 1,900 |
| 13 | 1.1.3.1 | Elaborar Cronograma e Orçamento Preliminares |  | 1d | 2025-11-13 | 2025-11-14 | 9 | 0d | Gustavo | 2h | 300 |
| 14 | 1.1.3.2 | Revisar Cronograme e Orçamento Preliminares |  | 1d | 2025-11-14 | 2025-11-17 | 13 | 0d | GP Externo | 8h | 1,600 |
| 15 | 1.2 | **Análise** |  | 10d? | 2025-11-17 | 2025-12-01 |  | 0d |  | 50h | 3,340 |
| 16 | 1.2.1 | **Documento de Requisitos** |  | 8d? | 2025-11-17 | 2025-11-27 |  | 0d |  | 42h | 2,300 |
| 17 | 1.2.1.1 | Reunir-se com o cliente |  | 1d? | 2025-11-17 | 2025-11-19 | 14 | 0d | Boaz | 8h | 1,000 |
| 18 | 1.2.1.2 | Elaborar DRE |  | 3d? | 2025-11-19 | 2025-11-24 | 17 | 0d | Gustavo, Boaz | 24h |  |
| 19 | 1.2.1.3 | Revisar DRE |  | 1d? | 2025-11-24 | 2025-11-25 | 18 | 0d | Gustavo [25%] | 2h | 300 |
| 20 | 1.2.1.4 | Submeter DRE para aprovação do cliente |  | 1d? | 2025-11-25 | 2025-11-27 | 19 | 0d | Boaz | 8h | 1,000 |
| 21 | 1.2.2 | **MRB** |  | 2d? | 2025-11-27 | 2025-12-01 |  | 0d |  | 8h | 1,040 |
| 22 | 1.2.2.1 | Elaborar MRB |  | 1d? | 2025-11-27 | 2025-11-28 | 20 | 0d | Matheus [75%] | 6h | 780 |
| 23 | 1.2.2.2 | Revisar MRB |  | 1d? | 2025-11-28 | 2025-12-01 | 22 | 0d | Matheus [25%] | 2h | 260 |
| 24 | 1.3 | **Projeto** |  | 45.62d? | 2025-11-03 | 2026-01-05 |  | 0d |  | 194h | 20,390 |
| 25 | 1.3.1 | **Diagrama de Classes** |  | 4d? | 2025-12-01 | 2025-12-05 |  | 0d |  | 20h | 2,540 |
| 26 | 1.3.1.1 | Elaborar Diagrama de Classes |  | 2d? | 2025-12-01 | 2025-12-03 | 23 | 0d | Matheus | 16h | 2,080 |
| 27 | 1.3.1.2 | Revisar Diagrama de Classes |  | 1d? | 2025-12-03 | 2025-12-04 | 26 | 0d | Caio [25%] | 2h | 200 |
| 28 | 1.3.1.3 | Atualizar MRB |  | 1d? | 2025-12-04 | 2025-12-05 | 27 | 0d | Matheus [25%] | 2h | 260 |

| ID | WBS | Task | Duration | Start | Finish | Predecessors | Total slack | Free slack | Resources | Work | Cost |
| --- | --- | --- | --- | --- | --- | --- | --- | --- | --- | --- | --- |
| 29 | 1.3.2 | **Modelo Entidade Relacionamento** | 3d? | 2025-12-05 | 2025-12-10 |  | 0d |  |  | 6h | 650 |
| 30 | 1.3.2.1 | Elaborar MER | 1d? | 2025-12-05 | 2025-12-08 | 28 | 0d |  | Caio [50%] | 4h | 400 |
| 31 | 1.3.2.2 | Revisar MER | 1d? | 2025-12-08 | 2025-12-10 | 30 | 0d |  | Boaz [25%] | 2h | 250 |
| 32 | 1.3.3 | **Implementação** | 45.62d? | 2025-11-03 | 2026-01-05 |  | 0d |  |  | 168h | 17,200 |
| 33 | 1.3.3.1 | **Release 01** | 6d? | 2025-12-10 | 2025-12-18 |  | 0d |  |  | 66h | 7,075 |
| 34 | 1.3.3.1.1 | **Implementação** | 4d? | 2025-12-10 | 2025-12-16 |  | 0d |  |  | 64h | 6,800 |
| 35 | 1.3.3.1.1.1 | **RFC01** | 4d? | 2025-12-10 | 2025-12-16 |  | 0d |  | Gustavo | 40h | 4,800 |
| 36 | 1.3.3.1.1.1.1 | Implementar RFS01 | 1d? | 2025-12-10 | 2025-12-11 | 31 | 0d |  |  | 2h |  |
| 37 | 1.3.3.1.1.1.2 | Implementar RFS02 | 1d? | 2025-12-11 | 2025-12-12 | 36 | 0d |  |  | 2h |  |
| 38 | 1.3.3.1.1.1.3 | Implementar RFS03 | 1d? | 2025-12-12 | 2025-12-15 | 37 | 0d |  |  | 2h |  |
| 39 | 1.3.3.1.1.1.4 | Implementar RFS04 | 1d? | 2025-12-15 | 2025-12-16 | 38 | 0d |  |  | 2h |  |
| 40 | 1.3.3.1.1.2 | **RFC02** | 4d | 2025-12-10 | 2025-12-16 |  | 8.38d |  | Boaz | 24h | 2,000 |
| 41 | 1.3.3.1.1.2.1 | Implementar RFS05 | 1d | 2025-12-10 | 2025-12-11 | 31 | 8.38d | 0d |  | 2h |  |
| 42 | 1.3.3.1.1.2.2 | Implementar RFS06 | 1d | 2025-12-11 | 2025-12-12 | 41 | 8.38d | 0d |  | 2h |  |
| 43 | 1.3.3.1.1.2.3 | Implementar RFS07 | 1d | 2025-12-12 | 2025-12-15 | 42 | 8.38d | 0d |  | 2h |  |
| 44 | 1.3.3.1.1.2.4 | Implementar RFS08 | 1d | 2025-12-15 | 2025-12-16 | 43 | 8.38d | 0d |  | 2h |  |
| 45 | 1.3.3.1.2 | **Teste** | 2d? | 2025-12-16 | 2025-12-18 |  | 0d |  |  | 2h | 275 |
| 46 | 1.3.3.1.2.1 | Testar RC01 | 1d? | 2025-12-16 | 2025-12-18 | 39 | 0d |  | Boaz [12.5%] | 1h | 125 |
| 47 | 1.3.3.1.2.2 | Testar RC02 | 1d? | 2025-12-16 | 2025-12-17 | 44 | 8.38d | 0d | Gustavo [12.5%] | 1h | 150 |
| 48 | 1.3.3.2 | **Release 02** | 5.12d? | 2025-12-17 | 2025-12-24 |  | 1d |  |  | 82h | 7,590 |
| 49 | 1.3.3.2.1 | **Implementação** | 5.12d? | 2025-12-17 | 2025-12-24 |  | 1d |  |  | 82h | 7,590 |
| 50 | 1.3.3.2.1.1 | **RFC03** | 4d | 2025-12-17 | 2025-12-23 |  | 8.38d |  | Caio | 40h | 3,200 |
| 51 | 1.3.3.2.1.1.1 | Implementar RFS09 | 1d | 2025-12-17 | 2025-12-18 | 47 | 8.38d | 0d |  | 2h |  |
| 52 | 1.3.3.2.1.1.2 | Implementar RFS10 | 1d | 2025-12-18 | 2025-12-19 | 51 | 8.38d | 0d |  | 2h |  |
| 53 | 1.3.3.2.1.1.3 | Implementar RFS11 | 1d | 2025-12-19 | 2025-12-22 | 52 | 8.38d | 0d |  | 2h |  |
| 54 | 1.3.3.2.1.1.4 | Implementar RFS12 | 1d | 2025-12-22 | 2025-12-23 | 53 | 8.38d | 0d |  | 2h |  |

| ID | WBS | Task | Duration | Start | Finish | Predecessors | Total slack | Resources | Work | Cost |
| --- | --- | --- | --- | --- | --- | --- | --- | --- | --- | --- |
| 55 | 1.3.3.2.1.2 | **RFC04** | 4d | 2025-12-18 | 2025-12-24 |  | 0d | Matheus | 40h | 4,160 |
| 56 | 1.3.3.2.1.2.1 | Implementar RFS13 | 1d | 2025-12-18 | 2025-12-19 | 46 | 0d |  | 2h |  |
| 57 | 1.3.3.2.1.2.2 | Implementar RFS14 | 1d | 2025-12-19 | 2025-12-22 | 56 | 0d |  | 2h |  |
| 58 | 1.3.3.2.1.2.3 | Implementar RFS15 | 1d | 2025-12-22 | 2025-12-23 | 57 | 0d |  | 2h |  |
| 59 | 1.3.3.2.1.2.4 | Implementar RFS16 | 1d | 2025-12-23 | 2025-12-24 | 58 | 0d |  | 2h |  |
| 60 | 1.3.3.2.1.3 | **Teste** | 1.12d? | 2025-12-23 | 2025-12-24 |  | 1d |  | 2h | 230 |
| 61 | 1.3.3.2.1.3.1 | Testar RFC03 | 1d | 2025-12-23 | 2025-12-24 | 54 | 8.38d | Matheus [12.5%] | 1h | 130 |
| 62 | 1.3.3.2.1.3.2 | Testar RFC04 | 0.12d? | 2025-12-24 | 2025-12-24 | 59 | 0d | Caio | 1h | 100 |
| 63 | 1.3.3.3 | **Release 03** | 41.5d? | 2025-11-03 | 2025-12-30 |  | 4.12d |  | 12h | 1,575 |
| 64 | 1.3.3.3.1 | **RFC05** | 1d? | 2025-12-24 | 2025-12-25 |  | 0d |  | 2h | 260 |
| 65 | 1.3.3.3.1.1 | Implementar RFS17 | 1d? | 2025-12-24 | 2025-12-25 | 62 | 0d | Matheus [25%] | 2h | 260 |
| 66 | 1.3.3.3.2 | **RFC06** | 2d? | 2025-12-25 | 2025-12-29 |  | 0d |  | 2h | 250 |
| 67 | 1.3.3.3.2.1 | Implementar RFS18 | 1d? | 2025-12-25 | 2025-12-29 | 65 | 0d | Boaz [25%] | 2h | 250 |
| 68 | 1.3.3.3.3 | **RFC07** | 41.38d? | 2025-11-03 | 2025-12-30 |  | 4.25d |  | 4h | 560 |
| 69 | 1.3.3.3.3.1 | Implementar RFS19 | 1d? | 2025-12-29 | 2025-12-30 | 67 | 0d | Gustavo [25%] | 2h | 300 |
| 70 | 1.3.3.3.3.2 | Implementar RFS20 | 1d? | 2025-11-03 | 2025-11-03 |  | 44.62d | Matheus [25%] | 2h | 260 |
| 71 | 1.3.3.3.4 | **Teste** | 41.5d? | 2025-11-03 | 2025-12-30 |  | 4.12d |  | 4h | 505 |
| 72 | 1.3.3.3.4.1 | Testar RFC05 | 1d? | 2025-12-25 | 2025-12-26 | 65 | 6.25d | Gustavo [12.5%] | 1h | 150 |
| 73 | 1.3.3.3.4.2 | Testar RFC06 | 1d? | 2025-12-29 | 2025-12-30 | 67 | 4.25d | Matheus [12.5%] | 1h | 130 |
| 74 | 1.3.3.3.4.3 | Testar RFC07 | 0.12d? | 2025-12-30 | 2025-12-30 | 69 | 0d | Boaz | 1h | 125 |
| 75 | 1.3.3.3.4.4 | Testar RFC07 | 1d? | 2025-11-03 | 2025-11-03 |  | 44.62d | Caio [12.5%] | 1h | 100 |
| 76 | 1.3.3.4 | **Release 04** | 2d? | 2025-12-30 | 2026-01-01 |  | 0d |  | 3h | 330 |
| 77 | 1.3.3.4.1 | Inteligência do Sistema | 1d? | 2025-12-30 | 2025-12-31 | 74 | 0d | Caio [25%] | 2h | 200 |
| 78 | 1.3.3.4.2 | Testar Inteligência do Sistema | 1d? | 2025-12-31 | 2026-01-01 | 77 | 0d | Matheus [12.5%] | 1h | 130 |

| ID | WBS | Task | Duration | Start | Finish | Predecessors | Total slack | Resources | Work | Cost |
| --- | --- | --- | --- | --- | --- | --- | --- | --- | --- | --- |
| 79 | 1.3.3.5 | **Monitoramento e Controle** | 1d? | 2026-01-01 | 2026-01-02 |  | 0d |  | 2h | 300 |
| 80 | 1.3.3.5.1 | Acompanhar Projeto | 1d? | 2026-01-01 | 2026-01-02 | 78 | 0d | Gustavo [25%] | 2h | 300 |
| 81 | 1.3.3.6 | **Gerência de Configuração** | 1.12d? | 2026-01-02 | 2026-01-05 |  | 0d |  | 3h | 330 |
| 82 | 1.3.3.6.1 | Elaborar Branch | 1d? | 2026-01-02 | 2026-01-05 | 80 | 0d | Caio [25%] | 2h | 200 |
| 83 | 1.3.3.6.2 | Realizar Merge da Branch X para a Trunk | 0.12d? | 2026-01-05 | 2026-01-05 | 82 | 0d | Matheus | 1h | 130 |
